# byt

Schedule from MS Project, 2011-08-01 to 2011-08-25, A marks actual dates.

## Calendars

- Standard: Mon-Fri 08:00-12:00, 13:00-17:00; Sat-Sun off.

## Resources

| Resource | Group |
| --- | --- |
| Trascend |  |
| Desarrollador 1 | Trascend |
| Arquitecto | Trascend |
| Lider de proyecto | Trascend |
| Desarrolaldor 2 | Trascend |
| Desarrollador 3 | Trascend |
| Recurso Bolet y Terrero |  |

## Schedule

| ID | WBS | Task | Type | Duration | Start | Finish | Predecessors | Remaining | Total slack | Free slack | Resources | Work |
| --- | --- | --- | --- | --- | --- | --- | --- | --- | --- | --- | --- | --- |
| 1 | 1 | **Bolet y Terrero** |  | 19d | 2011-08-01 08:00 A | 2011-08-25 17:00 |  | 19d | 0d |  |  | 192h |
| 2 | 1.1 | **SCRUM 1** |  | 19d | 2011-08-01 08:00 A | 2011-08-25 17:00 |  | 19d | 0d |  |  | 192h |
| 3 | 1.1.1 | **Analisis y diseno** |  | 1d | 2011-08-01 08:00 A | 2011-08-01 17:00 |  | 1d | 18d |  |  |  |
| 4 | 1.1.1.1 | Diseno OO |  | 8h | 2011-08-01 08:00 A | 2011-08-01 17:00 |  | 8h | 0d |  |  | 8h |
| 5 | 1.1.1.2 | Inicio de DAS |  | 8h | 2011-08-01 08:00 A | 2011-08-01 17:00 |  | 8h | 18d |  |  | 8h |
| 6 | 1.1.2 | **Desarrollo** |  | 15d | 2011-08-02 08:00 A | 2011-08-22 17:00 |  | 15d | 3d |  |  | 152h |
| 7 | 1.1.2.1 | Arquitectura |  | 56h | 2011-08-02 08:00 A | 2011-08-10 17:00 | 4 | 56h | 11d | 0d | Desarrolaldor 2 | 56h |
| 8 | 1.1.2.2 | **Historias** |  | 12d | 2011-08-05 08:00 A | 2011-08-22 17:00 |  | 12d | 0d |  |  | 96h |
| 9 | 1.1.2.2.1 | Agregar usuario |  | 8h | 2011-08-05 08:00 A | 2011-08-05 17:00 | 7SS+24h | 8h | 0d |  | Desarrollador 1 | 8h |
| 10 | 1.1.2.2.2 | Modificar usuario |  | 8h | 2011-08-08 08:00 A | 2011-08-08 17:00 | 9 | 8h | 0d |  | Desarrollador 1 | 8h |
| 11 | 1.1.2.2.3 | Consultar todos los usuarios |  | 8h | 2011-08-09 08:00 A | 2011-08-09 17:00 | 10 | 8h | 0d |  | Desarrollador 1 | 8h |
| 12 | 1.1.2.2.4 | Consultar un usuario |  | 8h | 2011-08-10 08:00 A | 2011-08-10 17:00 | 11 | 8h | 0d |  | Desarrollador 1 | 8h |
| 13 | 1.1.2.2.5 | Agregar rol |  | 8h | 2011-08-11 08:00 A | 2011-08-11 17:00 | 12 | 8h | 0d |  | Desarrollador 1 | 8h |
| 14 | 1.1.2.2.6 | Modificar rol |  | 8h | 2011-08-12 08:00 A | 2011-08-12 17:00 | 13 | 8h | 0d |  | Desarrollador 1 | 8h |
| 15 | 1.1.2.2.7 | Consultar todos los roles |  | 8h | 2011-08-15 08:00 A | 2011-08-15 17:00 | 14 | 8h | 0d |  | Desarrollador 1 | 8h |
| 16 | 1.1.2.2.8 | Consultar un rol |  | 8h | 2011-08-16 08:00 A | 2011-08-16 17:00 | 15 | 8h | 0d |  | Desarrollador 1 | 8h |
| 17 | 1.1.2.2.9 | Agregar objetos |  | 8h | 2011-08-17 08:00 A | 2011-08-17 17:00 | 16 | 8h | 0d |  | Desarrollador 1 | 8h |
| 18 | 1.1.2.2.10 | Modificar objetos |  | 8h | 2011-08-18 08:00 A | 2011-08-18 17:00 | 17 | 8h | 0d |  | Desarrollador 1 | 8h |
| 19 | 1.1.2.2.11 | Consultar todos los objetos |  | 8h | 2011-08-19 08:00 A | 2011-08-19 17:00 | 18 | 8h | 0d |  | Desarrollador 1 | 8h |
| 20 | 1.1.2.2.12 | Consultar un objeto |  | 8h | 2011-08-22 08:00 A | 2011-08-22 17:00 | 19 | 8h | 0d |  | Desarrollador 1 | 8h |
| 21 | 1.1.3 | **Integracion** |  | 1d | 2011-08-23 08:00 A | 2011-08-23 17:00 |  | 1d | 0d |  |  | 8h |
| 22 | 1.1.3.1 | Integrar iteracion 1 |  | 8h | 2011-08-23 08:00 A | 2011-08-23 17:00 | 20 | 8h | 0d |  | Desarrollador 1 | 8h |
| 23 | 1.1.4 | **Pruebas de aceptacion** |  | 2d | 2011-08-24 08:00 A | 2011-08-25 17:00 |  | 2d | 0d |  |  | 32h |
| 24 | 1.1.4.1 | Prueba iteracion 1 |  | 16h | 2011-08-24 08:00 A | 2011-08-25 17:00 | 22 | 16h | 0d |  | Recurso Bolet y Terrero; Desarrollador 1 | 32h |
| 25 | 1.1.5 | Aceptacion iteracion 1 | milestone | 0h | 2011-08-25 17:00 A | 2011-08-25 17:00 | 24 | 0h | 0d |  | Recurso Bolet y Terrero |  |
